# MITO & Ticketsir-Sprint 30

How a schedule from MS Project changed from version to version. A marks actual dates.

## Version 1 (saved 2026-04-15)

Note of the change: Add mobile-responsive redesign: card layout, accordions, floating scrollbar

| ID | WBS | Task | Duration | Start | Finish | Predecessors | Complete | Total float | Constraint |
| --- | --- | --- | --- | --- | --- | --- | --- | --- | --- |
| 2 | 1 | **TicketSir** | 10d? | 2026-02-19 | 2026-03-04 |  | 87% |  |  |
| 3 |  | TicketSir Bug Fixes | 1d? | 2026-02-13 | 2026-02-13 |  |  | 66d | finish no earlier than 2026-02-13 |
| 4 |  | 7998 – TicketSir (Pre sale & Waitlist Booking)-Mobile App | 1d? | 2026-02-24 A | 2026-02-24 A |  | 100% |  | finish no earlier than 2026-02-24 |
| 5 |  | Label changes | 1d? | 2026-02-24 A | 2026-02-24 A |  | 100% |  | finish no earlier than 2026-02-24 |
| 6 |  | 7839 – Biometric Login (TicketSir & Cokobar)-Mobile App | 31d? | 2026-02-10 A | 2026-03-24 |  | 95% | 39d | finish no earlier than 2026-03-24 |
| 7 |  | 7923 – DB Migration of TicketSir | 29d? | 2026-03-03 A | 2026-04-10 |  | 80% | 26d | finish no earlier than 2026-04-10 |
| 9 | 2 | **Rhemito** | 10d? | 2026-02-19 | 2026-03-04 |  | 99% |  |  |
| 10 | 2.1 | **8058: Rhemito bug fixes** | 12d? | 2026-02-19 | 2026-03-06 A |  | 100% |  |  |
| 11 |  | Backend | 0d? | 2026-02-06 A | 2026-02-06 A |  | 100% |  |  |
| 12 |  | Front end: Web | 8d? | 2026-02-19 A | 2026-03-02 A |  | 100% |  | finish no earlier than 2026-03-02 |
| 13 |  | Rhemito bug fixes: Mobile App | 8d? | 2026-02-25 A | 2026-03-06 A | 4, 5 | 100% |  | finish no earlier than 2026-03-06 |
| 14 | 2.2 | **Notification** | 13d? | 2026-03-25 A | 2026-04-10 |  | 98% | 26d |  |
| 15 |  | Backend | 1d? | 2026-04-10 A | 2026-04-10 |  | 70% | 26d | finish no earlier than 2026-04-10 |
| 16 |  | Front end: web | 2d? | 2026-04-02 A | 2026-04-03 A |  | 100% |  | finish no earlier than 2026-04-03 |
| 17 |  | Mobile App | 13d? | 2026-03-25 A | 2026-04-10 A | 6 | 100% |  | finish no earlier than 2026-04-14 |
| 18 |  | 7744 – Pay by Bank & Bank Transfer for New Customers | 1d? | 2026-02-19 | 2026-02-19 |  |  | 62d | start no earlier than 2026-02-19 |
| 19 |  | Rhemito-MobileApp: Help Tickets | 12d? | 2026-03-26 A | 2026-04-10 A |  | 100% |  | finish no earlier than 2026-04-10 |
| 20 |  | Mobile App: Manual Bank Transfer Flow | 4d? | 2026-04-15 | 2026-04-20 |  |  | 20d | finish no earlier than 2026-04-20 |
| 22 |  | 8057: KYC Bug Fixes | 1d | 2026-02-19 | 2026-02-19 |  |  |  |  |
| 24 | 7 | **7986 – Affiliate Dashboard (OnePipe Integration)** | 0d? | 2026-02-11 | 2026-02-11 |  | 80% |  |  |
| 25 |  | Frontend: web | 1d? | 2026-02-12 | 2026-02-12 |  |  | 67d |  |
| 26 |  | Backend | 1d? | 2026-02-12 A | 2026-02-12 A |  | 100% |  |  |
| 27 |  | Design | 1d? | 2026-02-12 | 2026-02-12 |  |  | 67d |  |
| 28 |  | OnePipe Enhancement | 14d? | 2026-02-19 A | 2026-04-20 | 74 | 90% | 20.6d | finish no earlier than 2026-03-10 |
| 30 | 8 | **7996 – Role based Login on Mito Admin** | 9d? | 2026-02-19 A | 2026-03-03 |  | 100% |  |  |
| 31 |  | Backend | 24d? | 2026-02-19 A | 2026-03-24 A |  | 100% |  | finish no earlier than 2026-03-24 |
| 32 |  | Frontend | 9d? | 2026-02-19 A | 2026-03-03 A |  | 100% |  | finish no earlier than 2026-03-03 |
| 34 | 9 | **OBO** | 17d? | 2026-02-19 A | 2026-03-13 |  | 75% |  |  |
| 35 |  | Frontend | 42d? | 2026-02-19 A | 2026-04-17 |  | 60% | 0d | finish no earlier than 2026-04-17 |
| 36 |  | Backend | 24d? | 2026-02-19 A | 2026-04-01 A |  | 100% |  | finish no earlier than 2026-04-01 |
| 38 | 10 | **Rate Manager** | 14d? | 2026-02-19 A | 2026-03-10 |  | 56% |  |  |
| 39 |  | Frontend | 7.4d? | 2026-02-19 A | 2026-04-22 | 35 | 59% | 18d | finish no earlier than 2026-04-22 |
| 40 |  | Backend-Config Setup | 6d? | 2026-03-09 A | 2026-03-16 A |  | 100% |  | finish no earlier than 2026-03-16 |
| 41 |  | Backend-Overrides | 6d? | 2026-03-17 A | 2026-03-24 A |  | 100% |  | finish no earlier than 2026-03-24 |
| 42 |  | Backend-Cross Rates | 18d? | 2026-03-25 A | 2026-04-17 |  | 60% | 10d | finish no earlier than 2026-04-17 |
| 43 |  | Backend-Existing Affiliate Migration | 11d? | 2026-04-20 | 2026-05-04 | 42 |  | 10d | finish no earlier than 2026-04-28 |
| 45 | 11 | **Customer support portal** | 12d? | 2026-03-25 A | 2026-04-09 A |  | 100% |  |  |
| 46 |  | Front end | 12d? | 2026-03-25 A | 2026-04-09 A |  | 100% |  | finish no earlier than 2026-04-09 |
| 47 |  | Backend | 4d? | 2026-03-25 A | 2026-03-30 A |  | 100% |  | finish no earlier than 2026-03-30 |
| 49 | 12 | **Affiliate** | 10d? | 2026-02-19 | 2026-03-04 |  | 81% |  |  |
| 50 |  | AirPeace Payment Pages/V2 changes | 1d? | 2026-02-19 A | 2026-02-19 A |  | 100% |  |  |
| 51 |  | Refund Enhancement | 34d? | 2026-04-01 A | 2026-05-18 |  | 99% | 0d | finish no earlier than 2026-04-14 |
| 52 |  | Account Switching: Business<->Individual | 2d? | 2026-02-25 | 2026-02-26 |  |  | 57d | finish no earlier than 2026-02-26 |
| 53 |  | Interswitch-Payout | 37d? | 2025-11-15 A | 2026-02-24 |  | 90% | 59.3d |  |
| 54 |  | Flex POC | 2d? | 2026-04-14 A | 2026-04-15 |  | 50% | 0d | finish no earlier than 2026-04-15 |
| 55 |  | FLEX-Backend | 24d? | 2026-04-14 A | 2026-05-15 |  | 50% | 1d | start no earlier than 2026-04-14 |
| 56 |  | Affiliate Coordination | 1d? | 2026-04-10 A | 2026-04-10 |  | 50% | 26d | start no earlier than 2026-04-10 |
| 58 | 13 | **MITO-Admin** | 1d? | 2026-02-19 A | 2026-02-19 A |  | 100% |  |  |
| 59 |  | 7811 – Movement to Retail Submission: Bug Fixes | 1d? | 2026-02-19 A | 2026-02-19 A |  | 100% |  |  |
| 62 | 14 | **Testing** | 10d? | 2026-02-19 A | 2026-03-04 |  | 79% |  |  |
| 63 |  | 7925 – Interswitch | 11d? | 2026-03-20 A | 2026-04-03 |  | 60% | 31d | finish no earlier than 2026-04-03 |
| 64 |  | 8002: (App) Ticketsir: booking for pre sale and waitlist app | 1d? | 2026-02-25 A | 2026-02-25 A |  | 100% |  | finish no earlier than 2026-02-25 |
| 65 |  | 8054: Date Caption changes | 1d? | 2026-02-26 | 2026-02-26 | 64 |  | 57d |  |
| 66 |  | Role based | 8d? | 2026-03-13 A | 2026-03-24 A |  | 100% |  | finish no earlier than 2026-03-24 |
| 67 |  | OBO | 1d? | 2026-03-18 A | 2026-04-14 |  | 50% | 24d | finish no earlier than 2026-04-14 |
| 68 |  | Help Tickets Web | 5d? | 2026-04-03 A | 2026-04-09 A |  | 100% |  | finish no earlier than 2026-04-09 |
| 69 |  | Help Tickets App | 2d? | 2026-04-08 A | 2026-04-09 A |  | 100% |  | finish no earlier than 2026-04-09 |
| 70 |  | Ticketsir DB Migration | 24d? | 2026-03-13 A | 2026-04-15 |  | 80% | 23d | finish no earlier than 2026-04-15 |
| 71 |  | Flex POC | 1d? | 2026-02-19 A | 2026-04-16 | 54 | 20% | 22.2d |  |
| 73 | 15 | **Integrations** | 5d? | 2026-04-10 A | 2026-04-16 |  | 79% | 0d |  |
| 74 |  | Plaid for Rhemito | 3d? | 2026-04-14 A | 2026-04-16 |  | 50% | 0d | finish no earlier than 2026-04-16 |
| 76 |  | Mobile App Platform and Environment Update | 4d? | 2026-04-10 A | 2026-04-15 A |  | 100% |  | finish no earlier than 2026-04-15 |

## Version 2 (saved 2026-04-29)

Note of the change: Update Sprint 31 Gantt Chart from latest MPP

Last finish 2026-05-18 → 2026-07-01 (+44d). Complete tasks 23 → 30.

Added:

| ID | Task | Duration | Start | Finish | Constraint | Resources |
| --- | --- | --- | --- | --- | --- | --- |
| 20 | **Manual Bank Transfer** | 10d? | 2026-04-15 A | 2026-04-28 A |  |  |
| 22 | Web: Manual Bank Transfer | 5d? | 2026-04-20 A | 2026-04-24 A | start no earlier than 2026-04-20 | Monu |
| 24 | Mobile APP: Resend Transaction | 1d? | 2025-09-30 | 2025-09-30 |  | Jayant |
| 25 | **Cancel Transaction** | 1d? | 2025-09-30 | 2025-09-30 |  |  |
| 26 | Backend | 1d? | 2025-09-30 | 2025-09-30 |  | Rishabh |
| 27 | Web Frontend | 1d? | 2025-09-30 | 2025-09-30 |  | Monu |
| 28 | Mobile App | 1d? | 2025-09-30 | 2025-09-30 |  | Jayant |
| 35 | Biller Setup for Onepipe | 3d? | 2026-04-29 A | 2026-05-01 | finish no earlier than 2026-05-01 | Sakshi |
| 67 | Config..Sttic Pages | 44d? | 2026-05-01 A | 2026-07-01 | finish no earlier than 2026-07-01 | Sakshi |
| 82 | SDK-MITO | 1d? | 2026-04-24 A | 2026-04-29 | finish no earlier than 2026-04-29 | Vakil |

Changed:

| ID | Task | Start | Finish | Duration | Complete | Total float | Predecessors | Other |
| --- | --- | --- | --- | --- | --- | --- | --- | --- |
| 3 | TicketSir Bug Fixes | 2026-02-13 → 2026-02-27 A (+14d) | 2026-02-13 → 2026-02-27 A (+14d) |  | 0% → 100% | 66d → none |  | constraint finish no earlier than 2026-02-13 → finish no earlier than 2026-02-27 |
| 7 | 7923 – DB Migration of TicketSir |  | 2026-04-10 → 2026-05-01 (+21d) | 29d? → 44d? |  | 26d → 43d |  | constraint finish no earlier than 2026-04-10 → finish no earlier than 2026-05-01 |
| 9 | **Rhemito** |  |  |  | 99% → 100% |  |  |  |
| 14 | **Notification** |  | 2026-04-10 A |  | 98% → 100% | 26d → none |  |  |
| 15 | Backend |  | 2026-04-10 A |  | 70% → 100% | 26d → none |  |  |
| 21 | Mobile App: Manual Bank Transfer Flow | 2026-04-15 A | 2026-04-20 → 2026-04-28 A (+8d) | 4d? → 10d? | 0% → 100% | 20d → none |  | constraint finish no earlier than 2026-04-20 → finish no earlier than 2026-04-28 |
| 30 | **7986 – Affiliate Dashboard (OnePipe Integration)** |  |  |  | 80% → 73% |  |  |  |
| 34 | OnePipe Enhancement |  | 2026-04-20 → 2026-05-05 (+15d) |  |  | 20.6d → 41.6d |  |  |
| 42 | Frontend |  | 2026-04-17 → 2026-05-27 (+40d) |  |  | 0d → 25.2d | none → 46 |  |
| 45 | **Rate Manager** |  |  |  | 56% → 66% |  |  |  |
| 46 | Frontend |  | 2026-04-22 → 2026-05-04 (+12d) | 7.4d? → 15.4d? | 59% → 65% | 18d → 0d | 42 → none | constraint finish no earlier than 2026-04-22 → finish no earlier than 2026-05-04 |
| 49 | Backend-Cross Rates |  | 2026-04-17 → 2026-04-29 (+12d) | 18d? → 26d? | 60% → 80% | 10d → 34d |  | constraint finish no earlier than 2026-04-17 → finish no earlier than 2026-04-29 |
| 50 | Backend-Existing Affiliate Migration | 2026-04-20 → 2026-04-30 (+10d) | 2026-05-04 → 2026-05-14 (+10d) |  |  | 10d → 34d |  |  |
| 56 | **Affiliate** |  |  |  | 81% → 83% |  |  |  |
| 61 | Flex POC |  | 2026-04-15 → 2026-04-22 A (+7d) | 2d? → 7d? | 50% → 100% | 0d → none |  | constraint finish no earlier than 2026-04-15 → finish no earlier than 2026-04-22 |
| 65 | **MITO-Admin** |  | 2026-02-19 A → 2026-07-01 (+132d) | 1d? → 95d? | 100% → 32% | none → 0d |  |  |
| 69 | **Testing** |  |  |  | 79% → 64% |  |  |  |
| 70 | 7925 – Interswitch |  | 2026-04-03 → 2026-04-30 (+27d) | 11d? → 30d? | 60% → 50% | 31d → 44d |  | constraint finish no earlier than 2026-04-03 → finish no earlier than 2026-04-30 |
| 72 | 8054: Date Caption changes | 2026-02-26 A | 2026-02-26 A |  | 0% → 100% | 57d → none |  |  |
| 74 | OBO |  | 2026-04-14 → 2026-05-08 (+24d) | 1d? → 19d? | 50% → 30% | 24d → 38d |  | constraint finish no earlier than 2026-04-14 → finish no earlier than 2026-05-08 |
| 78 | Flex POC |  | 2026-04-16 → 2026-04-27 A (+11d) | 1d? → 3.2d? | 20% → 100% | 22.2d → none |  | constraint none → finish no earlier than 2026-04-27 |
| 80 | **Integrations** |  | 2026-04-16 → 2026-05-01 (+15d) | 5d? → 16d? | 79% → 74% | 0d → 43d |  |  |
| 81 | Plaid for Rhemito |  | 2026-04-16 → 2026-05-01 (+15d) | 3d? → 14d? | 50% → 65% |  |  | constraint finish no earlier than 2026-04-16 → finish no earlier than 2026-05-01 |
